# Softtech PİP Şablonu

Schedule from MS Project, 2017-01-19 to 2018-10-22, costs in TL, A marks actual dates.

## Calendars

- Standard: Mon-Fri 08:00-12:00, 13:00-17:00; Sat-Sun off. Exceptions (off unless hours are given): 2017-12-31 08:00-12:00, 13:00-17:00.

## Resources

| Resource | Rate |
| --- | --- |
| EREN ÖZDEMİR | 1 |
| MUKADDER DEVEDEN | 1 |
| RUKEN KARAHAN | 1 |
| Mehtap Özdemir | 1 |
| Murat Şenaltun | 1 |
| ŞÜKRAN ATALAY | 1 |
| TURGUT BİRDOĞAN | 1 |
| Bilgen Ersoy | 1 |
| Gürol Erer | 1 |
| Mustafa Kaan Özen | 1 |
| TBD | 1 |
| Berfu Utkan | 1 |
| TBD2 | 1 |
| EREN ÇAMDEVİREN | 1 |
| SERAP MUTLU AKGÜL | 1 |
| SELİM AÇAR | 1 |
| ALİ BURAK YİRMİBEŞOĞLU | 1 |
| ARZU AKIN | 1 |
| SARTUK CAN PALAMUT | 1 |
| Hicret Çelebi | 1 |
| Tuğba Şahin |  |

## Schedule

| ID | WBS | Task | Duration | Start | Finish | Complete | Remaining | Baseline start | Baseline finish | Baseline duration | Total slack | Constraint | Resources | Work | Actual work | Cost | Baseline cost | Actual cost | Issue Key | Project Key | Issue Priority | Issue Status | Teslimat |
| --- | --- | --- | --- | --- | --- | --- | --- | --- | --- | --- | --- | --- | --- | --- | --- | --- | --- | --- | --- | --- | --- | --- | --- |
| 1 | 1 | **Dijital İK** | 458.6d? | 2017-01-19 A | 2018-10-22 | 49% | 231.8d? | 2017-01-19 | 2018-07-31 | 400d? | 0d |  |  | 8901.45h | 2742.01h | 4,485.45 | 4,224 | 1,646.01 | P6087-1 | P6087 | Major | Proje Oluşturuldu |  |
| 2 | 1.1 | **RPM Geçmiş Kayıtları** | 204d? | 2017-01-19 A | 2017-10-31 | 52% | 97.88d? | 2017-01-19 | 2017-10-31 | 204d? | 254.6d |  |  | 4416h | 1096h |  |  |  | SKIP | P6087 |  |  |  |
| 3 | 1.1.1 | Yonetim Eski Kayıt_AA | 204d | 2017-01-19 A | 2017-10-31 | 62% | 77d | 2017-01-19 | 2017-10-31 | 204d | 254.6d | finish no earlier than 2017-10-31 |  | 240h | 120h |  |  |  | SKIP | P6087 |  |  |  |
| 4 | 1.1.2 | Geliştirme Eski Kayıt_AT | 204d | 2017-01-19 A | 2017-10-31 | 62% | 77d | 2017-01-19 | 2017-10-31 | 204d | 254.6d | finish no earlier than 2017-10-31 |  | 600h | 280h |  |  |  | SKIP | P6087 |  |  |  |
| 5 | 1.1.3 | Geliştirme Eski Kayıt_BÇ | 204d | 2017-01-19 A | 2017-10-31 | 62% | 77d | 2017-01-19 | 2017-10-31 | 204d | 254.6d | finish no earlier than 2017-10-31 |  | 536h | 320h |  |  |  | SKIP | P6087 |  |  |  |
| 6 | 1.1.4 | Geliştirme Eski Kayıt_BY | 204d | 2017-01-19 A | 2017-10-31 | 62% | 77d | 2017-01-19 | 2017-10-31 | 204d | 254.6d | finish no earlier than 2017-10-31 |  | 120h | 24h |  |  |  | SKIP | P6087 |  |  |  |
| 7 | 1.1.5 | Geliştirme Eski Kayıt_EÇ | 204d | 2017-01-19 A | 2017-10-31 | 62% | 77d | 2017-01-19 | 2017-10-31 | 204d | 254.6d | finish no earlier than 2017-10-31 |  | 640h | 32h |  |  |  | SKIP | P6087 |  |  |  |
| 8 | 1.1.6 | Proje Yönetim Eski Kayıt_GE | 204d | 2017-01-19 A | 2017-10-31 | 42% | 117.41d | 2017-01-19 | 2017-10-31 | 204d | 254.6d | finish no earlier than 2017-10-31 |  | 240h | 240h |  |  |  | SKIP | P6087 |  |  |  |
| 9 | 1.1.7 | Geliştirme Eski Kayıt_PG | 204d | 2017-01-19 A | 2017-10-31 | 12% | 178.6d | 2017-01-19 | 2017-10-31 | 204d | 254.6d | finish no earlier than 2017-10-31 |  | 80h | 80h |  |  |  | SKIP | P6087 |  |  |  |
| 10 | 1.1.8 | Geliştirme Eski Kayıt_SP | 1d? | 2017-01-19 | 2017-01-19 |  |  | 2017-01-19 | 2017-01-19 | 1d? | 457.6d |  |  | 240h |  |  |  |  | SKIP | P6087 |  |  |  |
| 11 | 1.1.9 | Geliştirme Eski Kayıt_SA | 1d? | 2017-01-19 | 2017-01-19 |  |  | 2017-01-19 | 2017-01-19 | 1d? | 457.6d |  |  | 800h |  |  |  |  | SKIP | P6087 |  |  |  |
| 12 | 1.1.10 | Geliştirme Eski Kayıt_SMA | 1d? | 2017-01-19 | 2017-01-19 |  |  | 2017-01-19 | 2017-01-19 | 1d? | 457.6d |  |  | 240h |  |  |  |  | SKIP | P6087 |  |  |  |
| 13 | 1.1.11 | KG Eski Kayıt | 1d? | 2017-01-19 | 2017-01-19 |  |  | 2017-01-19 | 2017-01-19 | 1d? | 457.6d |  |  | 24h |  |  |  |  | SKIP | P6087 |  |  |  |
| 14 | 1.1.12 | Yonetim Eski Kayıt_TB | 1d? | 2017-01-19 | 2017-01-19 |  |  | 2017-01-19 | 2017-01-19 | 1d? | 457.6d |  |  | 96h |  |  |  |  | SKIP | P6087 |  |  |  |
| 15 | 1.1.13 | Geliştirme Eski Kayıt_Rapor1 | 1d? | 2017-01-19 | 2017-01-19 |  |  | 2017-01-19 | 2017-01-19 | 1d? | 457.6d |  |  | 240h |  |  |  |  | SKIP | P6087 |  |  |  |
| 16 | 1.1.14 | Geliştirme Eski Kayıt_Rapor2 | 1d? | 2017-01-19 | 2017-01-19 |  |  | 2017-01-19 | 2017-01-19 | 1d? | 457.6d |  |  | 240h |  |  |  |  | SKIP | P6087 |  |  |  |
| 17 | 1.1.15 | Analiz Eski Kayıt_SA | 1d? | 2017-01-19 | 2017-01-19 |  |  | 2017-01-19 | 2017-01-19 | 1d? | 457.6d |  |  | 80h |  |  |  |  | SKIP | P6087 |  |  |  |
| 18 | 1.2 | **Yönetim** | 254.6d | 2017-11-01 A | 2018-10-22 | 61% | 99.02d | 2017-11-01 | 2018-07-31 | 196d | 0d |  |  | 1233.52h | 648.98h | 1,233.52 | 1,488 | 648.98 | SKIP | P6087 |  |  |  |
| 19 | 1.2.1 | Proje Yönetim Faaliyetleri-GE | 194d | 2017-11-03 A | 2018-07-31 | 29% | 137.25d | 2017-11-03 | 2018-07-31 | 194d | 58.6d | finish no earlier than 2018-07-31 | Gürol Erer [46.2%] | 246.52h | 152h | 246.52 | 520 | 152 | P6087-2 | P6087 |  | KAPALI | Yönetim |
| 20 | 1.2.2 | Proje Yönetim Faaliyetleri-KO | 212.6d | 2017-12-29 A | 2018-10-22 A | 100% |  | 2017-11-01 | 2018-07-31 | 196d |  | start no earlier than 2017-11-01 | Mustafa Kaan Özen [11.5%] | 203h | 203h | 203 | 200 | 203 | P6087-3 | P6087 |  | KAPALI | Yönetim |
| 21 | 1.2.3 | Yönetici Eforları-AA | 194d | 2017-11-03 A | 2018-07-31 | 99% | 1.94d | 2017-11-03 | 2018-07-31 | 194d | 58.6d | finish no earlier than 2018-07-31 | ARZU AKIN [7.7%] | 120h | 118.8h | 120 | 120 | 118.8 | P6087-25 | P6087 |  | ÇALIŞILIYOR | Yönetim |
| 22 | 1.2.4 | Yönetici Eforları-TB | 192d | 2017-11-07 A | 2018-07-31 A | 100% |  | 2017-11-07 | 2018-07-31 | 192d |  | finish no earlier than 2018-07-31 | TURGUT BİRDOĞAN [7.7%] | 96h | 96h | 96 | 80 | 96 | P6087-26 | P6087 |  | ÇALIŞILIYOR | Yönetim |
| 23 | 1.2.5 | Yönetici Eforları-MO | 186d | 2017-11-15 A | 2018-07-31 | 99% | 1.86d | 2017-11-15 | 2018-07-31 | 186d | 58.6d | finish no earlier than 2018-07-31 | Mehtap Özdemir [7.7%] | 80h | 79.18h | 80 | 80 | 79.18 | P6087-4 | P6087 |  | KAPALI | Yönetim |
| 24 | 1.2.6 | Test Çalışmaları | 196d | 2017-11-01 | 2018-07-31 |  |  | 2017-11-01 | 2018-07-31 | 196d | 58.6d | finish no earlier than 2018-07-31 | TBD [20.8%] | 272h |  | 272 | 272 |  | SKIP | P6087 |  | AÇIK |  |
| 25 | 1.2.7 | KG-Konfigürasyon | 196d | 2017-11-01 | 2018-07-31 |  |  | 2017-11-01 | 2018-07-31 | 196d | 58.6d | finish no earlier than 2018-07-31 | TBD [20.8%] | 216h |  | 216 | 216 |  | SKIP | P6087 |  | AÇIK |  |

| ID | WBS | Task | Type | Duration | Start | Finish | Predecessors | Complete | Remaining | Baseline start | Baseline finish | Baseline duration | Total slack | Free slack | Constraint | Resources | Work | Actual work | Cost | Baseline cost | Actual cost | Issue Key | Project Key | Issue Status | Teslimat |
| --- | --- | --- | --- | --- | --- | --- | --- | --- | --- | --- | --- | --- | --- | --- | --- | --- | --- | --- | --- | --- | --- | --- | --- | --- | --- |
| 26 | 1.3 | **Yetki Devri Mobil Nar Entegrasyonu** |  | 47d | 2017-11-01 A | 2018-01-03 |  |  | 46.79d | 2017-11-01 | 2017-12-31 | 43d | 207.6d |  |  |  | 440h |  | 440 | 440 |  | P6087-5 | P6087 | TAMAMLANDI |  |
| 27 | 1.3.1 | **Analiz** |  | 43d | 2017-11-01 | 2017-12-29 |  |  |  | 2017-11-01 | 2017-12-29 | 43d | 211.6d |  |  |  | 120h |  | 120 | 120 |  | SKIP | P6087 |  | P6087-5 |
| 28 | 1.3.1.1 | Yetki Devri Analiz Destek-SA |  | 43d | 2017-11-01 | 2017-12-29 |  |  |  | 2017-11-01 | 2017-12-29 | 43d | 211.6d |  | finish no earlier than 2017-12-29 | ŞÜKRAN ATALAY [23.3%] | 80h |  | 80 | 80 |  | P6087-6 | P6087 | KAPALI | P6087-5 |
| 29 | 1.3.1.2 | Yetki Devri Analiz Destek-MS |  | 43d | 2017-11-01 | 2017-12-29 |  |  |  | 2017-11-01 | 2017-12-29 | 43d | 211.6d |  | start no earlier than 2017-11-01 | Murat Şenaltun [11.6%] | 40h |  | 40 | 40 |  | P6087-7 | P6087 | KAPALI | P6087-5 |
| 30 | 1.3.2 | **Yazılım Geliştirme** |  | 35d | 2017-11-01 | 2017-12-19 |  |  |  | 2017-11-01 | 2017-12-19 | 35d | 219.6d |  |  |  | 80h |  | 80 | 80 |  | SKIP | P6087 |  | P6087-5 |
| 31 | 1.3.2.1 | Yetki Devri UAT Destek SA |  | 35d | 2017-11-01 | 2017-12-19 |  |  |  | 2017-11-01 | 2017-12-19 | 35d | 219.6d |  | start no earlier than 2017-11-01 | SELİM AÇAR [14.3%] | 40h |  | 40 | 40 |  | P6087-35 | P6087 | KAPALI | P6087-5 |
| 32 | 1.3.2.2 | Yetki Devri UAT Destek SMA |  | 35d | 2017-11-01 | 2017-12-19 |  |  |  | 2017-11-01 | 2017-12-19 | 35d | 219.6d |  | start no earlier than 2017-11-01 | SERAP MUTLU AKGÜL [14.3%] | 40h |  | 40 | 40 |  | P6087-27 | P6087 | KAPALI | P6087-5 |
| 33 | 1.3.3 | **Test Çalışmaları** |  | 35d | 2017-11-01 | 2017-12-19 |  |  |  | 2017-11-01 | 2017-12-19 | 35d | 219.6d |  |  |  | 240h |  | 240 | 240 |  | SKIP | P6087 |  | P6087-5 |
| 34 | 1.3.3.1 | Yetki Devri Teste Hazırlık-Raporlama |  | 35d | 2017-11-01 | 2017-12-19 |  |  |  | 2017-11-01 | 2017-12-19 | 35d | 219.6d |  | start no earlier than 2017-11-01 | Berfu Utkan [14.3%] | 40h |  | 40 | 40 |  | P6087-28 | P6087 | KAPALI | P6087-5 |
| 35 | 1.3.3.2 | Yetki Devri Testlerin Gerçekleştirilmesi |  | 35d | 2017-11-01 | 2017-12-19 |  |  |  | 2017-11-01 | 2017-12-19 | 35d | 219.6d |  | start no earlier than 2017-11-01 | TBD [71.4%] | 200h |  | 200 | 200 |  | SKIP | P6087 | AÇIK | P6087-5 |
| 36 | 1.3.4 | (MS) Yetki Devri Teslimat Kapanışı |  | 1d | 2018-01-03 A | 2018-01-03 A |  | 100% |  | 2017-12-31 | 2017-12-31 | 0d |  |  | start no earlier than 2017-12-31 |  |  |  |  |  |  | P6087-8 | P6087 | KAPALI | P6087-5 |
| 37 | 1.4 | **Devamsızlık Mobil Nar Entegrasyonu** |  | 123.07d? | 2017-11-24 A | 2018-05-15 |  | 43% | 70.31d? | 2017-11-24 | 2018-03-14 | 80d | 114.53d |  |  |  | 1363.93h | 564.5h | 1,363.93 | 848 | 564.5 | P6087-39 | P6087 | GERÇEKLEŞTİRİLİYOR |  |
| 38 | 1.4.1 | **Analiz** |  | 59d? | 2017-11-24 A | 2018-02-13 |  | 38% | 36.5d? | 2017-11-24 | 2017-12-28 | 25d | 0d |  |  |  | 670.43h | 279h | 670.43 | 320 | 279 | SKIP | P6087 | PLANLANIYOR |  |
| 39 | 1.4.1.1 | Devamsızlık Analiz-SA |  | 57d | 2017-11-24 A | 2018-02-09 |  | 35% | 37d | 2017-11-24 | 2017-12-21 | 20d | -53d | 0d | start no earlier than 2017-11-01 | ŞÜKRAN ATALAY [75%] | 552.67h | 195h | 552.67 | 200 | 195 | P6087-40 | P6087 | ÇÖZÜLDÜ | P6087-39 |
| 40 | 1.4.1.2 | Devamsızlık Analiz-HC |  | 6d? | 2018-02-06 A | 2018-02-13 A |  | 100% |  |  |  |  |  |  | finish no earlier than 2018-02-02 | Hicret Çelebi | 48h | 48h | 48 |  | 48 | P6087-50 | P6087 | ÇÖZÜLDÜ | P6087-39 |
| 41 | 1.4.1.3 | Devamsızlık Analiz-MS |  | 52d | 2017-12-01 A | 2018-02-09 |  | 34% | 34.15d | 2017-12-01 | 2017-12-28 | 20d | -5d | 0d | finish no earlier than 2018-02-02 | Murat Şenaltun [11.6%] | 69.77h | 36h | 69.77 | 120 | 36 | P6087-41 | P6087 | ÇÖZÜLDÜ | P6087-39 |
| 42 | 1.4.2 | **Yazılım Geliştirme** |  | 101.07d | 2017-11-28 A | 2018-04-17 | 38FS-2d | 58% | 42.72d | 2017-11-28 | 2018-02-14 | 58d | 114.53d | 0d |  |  | 525.5h | 285.5h | 525.5 | 360 | 285.5 | SKIP | P6087 | PLANLANIYOR |  |
| 43 | 1.4.2.1 | Devamsızlık Servislerin Hazırlanması-SA |  | 101.07d | 2017-11-28 A | 2018-04-17 A |  | 100% |  | 2017-11-28 | 2018-02-08 | 53.07d |  |  | start no earlier than 2017-11-24 | SELİM AÇAR [40.5%] | 285.5h | 285.5h | 285.5 | 120 | 285.5 | P6087-42 | P6087 | ÇALIŞILIYOR | P6087-39 |
| 44 | 1.4.2.2 | Devamsızlık Servislerin Hazırlanması-SCP |  | 37d | 2018-02-12 | 2018-04-03 |  |  |  | 2017-12-27 | 2018-02-14 | 37d | 123.6d |  | start no earlier than 2017-11-01 | SARTUK CAN PALAMUT [40.5%] | 120h |  | 120 | 120 |  | P6087-43 | P6087 | KAPALI | P6087-39 |
| 45 | 1.4.2.3 | Devamsızlık Servislerin Hazırlanması-SMA |  | 37d | 2018-02-12 | 2018-04-03 |  |  |  | 2017-12-27 | 2018-02-14 | 37d | 123.6d |  | start no earlier than 2017-11-01 | SERAP MUTLU AKGÜL [40.5%] | 120h |  | 120 | 120 |  | P6087-44 | P6087 | KAPALI | P6087-39 |
| 46 | 1.4.3 | **Test Çalışmaları** |  | 20d | 2018-04-17 | 2018-05-15 | 42 |  |  | 2018-02-15 | 2018-03-14 | 20d | 114.53d |  |  |  | 168h |  | 168 | 168 |  | SKIP | P6087 | PLANLANIYOR |  |
| 47 | 1.4.3.1 | Devamsızlık Teste Hazırlık-Raporlama |  | 20d | 2018-04-17 | 2018-05-15 |  |  |  | 2018-02-15 | 2018-03-14 | 20d | 97.93d |  | start no earlier than 2017-11-01 | Berfu Utkan [14.3%] | 40h |  | 40 | 40 |  | P6087-45 | P6087 | KAPALI | P6087-39 |
| 48 | 1.4.3.2 | Devamsızlık Testlerin Gerçekleştirilmesi |  | 14d | 2018-04-17 | 2018-05-07 |  |  |  | 2018-02-15 | 2018-03-06 | 14d | 103.93d | 0d | start no earlier than 2017-11-01 | TBD [78.6%] | 88h |  | 88 | 88 |  | SKIP | P6087 | PLANLANIYOR |  |
| 49 | 1.4.3.3 | Devamsızlık UAT Destek-SA |  | 14d | 2018-04-17 | 2018-05-07 | 48SS |  |  | 2018-02-15 | 2018-03-06 | 14d | 103.93d |  | start no earlier than 2018-01-16 | ŞÜKRAN ATALAY [65.6%] | 40h |  | 40 | 40 |  | P6087-46 | P6087 | KAPALI | P6087-39 |
| 50 | 1.4.4 | (MS) Devamsızlık Teslimat Kapanışı | milestone | 0d | 2018-01-04 A | 2018-01-04 |  | 99% | 0d | 2018-02-28 | 2018-02-28 |  | 191d |  | start no earlier than 2018-02-28 |  |  |  |  |  |  | P6087-47 | P6087 | ÇALIŞILIYOR | P6087-39 |

| ID | WBS | Task | Type | Duration | Start | Finish | Predecessors | Complete | Remaining | Baseline start | Baseline finish | Baseline duration | Total slack | Free slack | Constraint | Resources | Work | Actual work | Cost | Baseline cost | Actual cost | Issue Key | Project Key | Issue Status | Teslimat |
| --- | --- | --- | --- | --- | --- | --- | --- | --- | --- | --- | --- | --- | --- | --- | --- | --- | --- | --- | --- | --- | --- | --- | --- | --- | --- |
| 51 | 1.5 | **AraYüz Mobil Nar Entegrasyonu** |  | 92d | 2017-12-22 A | 2018-04-30 |  | 2% | 90.24d | 2017-12-22 | 2018-04-30 | 92d | 125.6d |  |  |  | 552h | 18h | 552 | 552 | 18 | P6087-9 | P6087 | GERÇEKLEŞTİRİLİYOR |  |
| 52 | 1.5.1 | **Analiz** |  | 20d | 2017-12-22 A | 2018-01-17 |  | 9% | 18.12d | 2017-12-22 | 2018-01-11 | 16d | 129.6d | 0d |  |  | 112h | 18h | 112 | 112 | 18 | SKIP | P6087 | PLANLANIYOR | P6087-9 |
| 53 | 1.5.1.1 | Arayüz Analiz-SA |  | 16d | 2017-12-28 A | 2018-01-17 |  | 19% | 13d | 2017-12-22 | 2018-01-11 | 16d | 71d |  | start no earlier than 2017-12-22 | ŞÜKRAN ATALAY [75%] | 96h | 18h | 96 | 96 | 18 | P6087-10 | P6087 | ÇALIŞILIYOR | P6087-9 |
| 54 | 1.5.1.2 | Arayüz Analiz-MS |  | 16d | 2017-12-22 | 2018-01-11 |  |  |  | 2017-12-22 | 2018-01-11 | 16d | 117d |  | start no earlier than 2017-12-22 | Murat Şenaltun [11.6%] | 16h |  | 16 | 16 |  | P6087-11 | P6087 | AÇIK | P6087-9 |
| 55 | 1.5.2 | **Yazılım Geliştirme** |  | 40d | 2018-02-06 | 2018-04-02 | 52FS+13d |  |  | 2018-01-31 | 2018-03-27 | 40d | 129.6d | 0d |  |  | 240h |  | 240 | 240 |  | SKIP | P6087 | PLANLANIYOR | P6087-9 |
| 56 | 1.5.2.1 | Arayüz Servislerin Hazırlanması-SA |  | 40d | 2018-02-06 | 2018-04-02 |  |  |  | 2018-01-31 | 2018-03-27 | 40d | 71d |  | start no earlier than 2017-11-01 | SELİM AÇAR [50%] | 160h |  | 160 | 160 |  | P6087-36 | P6087 | KAPALI | P6087-9 |
| 57 | 1.5.2.2 | Arayüz Servislerin Hazırlanması-SMA |  | 40d | 2018-02-06 | 2018-04-02 |  |  |  | 2018-01-31 | 2018-03-27 | 40d | 71d |  | start no earlier than 2017-11-01 | SERAP MUTLU AKGÜL [42.9%] | 80h |  | 80 | 80 |  | P6087-29 | P6087 | AÇIK | P6087-9 |
| 58 | 1.5.3 | **Test Çalışmaları** |  | 15d | 2018-04-03 | 2018-04-23 | 55 |  |  | 2018-03-28 | 2018-04-17 | 15d | 129.6d |  |  |  | 200h |  | 200 | 200 |  | SKIP | P6087 | PLANLANIYOR | P6087-9 |
| 59 | 1.5.3.1 | Arayüz Teste Hazırlık-Raporlama |  | 15d | 2018-04-03 | 2018-04-23 |  |  |  | 2018-03-28 | 2018-04-17 | 15d | 71d |  | start no earlier than 2017-11-01 | Berfu Utkan [14.3%] | 40h |  | 40 | 40 |  | P6087-30 | P6087 | AÇIK | P6087-9 |
| 60 | 1.5.3.2 | Arayüz Testlerin Gerçekleştirilmesi |  | 15d | 2018-04-03 | 2018-04-23 |  |  |  | 2018-03-28 | 2018-04-17 | 15d | 71d | 0d | start no earlier than 2017-11-01 | TBD | 120h |  | 120 | 120 |  | SKIP | P6087 | PLANLANIYOR | P6087-9 |
| 61 | 1.5.3.3 | Arayüz UAT Destek-SA |  | 15d | 2018-04-03 | 2018-04-23 | 60SS |  |  | 2018-03-28 | 2018-04-17 | 15d | 113d |  | start no earlier than 2018-03-06 | ŞÜKRAN ATALAY [65.6%] | 40h |  | 40 | 40 |  | P6087-12 | P6087 | AÇIK | P6087-9 |
| 62 | 1.5.4 | (MS) Arayüz Teslimat Kapanışı | milestone | 0d | 2018-04-30 | 2018-04-30 |  |  |  | 2018-04-30 | 2018-04-30 | 0d | 109d |  | start no earlier than 2018-04-30 |  |  |  |  |  |  | P6087-13 | P6087 | AÇIK | P6087-9 |
| 63 | 1.6 | **İşe Alım Raporları** |  | 194d | 2017-11-03 A | 2018-07-31 |  | 66% | 66.13d | 2017-11-03 | 2018-07-31 | 194d | 58.6d | 0d |  |  | 560h | 414.53h | 560 | 560 | 414.53 | P6087-14 | P6087 | GERÇEKLEŞTİRİLİYOR |  |
| 64 | 1.6.1 | **Rapor Geliştirme** |  | 190d | 2017-11-03 A | 2018-07-25 |  | 66% | 64.77d | 2017-11-03 | 2018-07-25 | 190d | 58.6d | 0d |  |  | 560h | 414.53h | 560 | 560 | 414.53 | SKIP | P6087 |  | P6087-14 |
| 65 | 1.6.1.1 | İşe Alım RaporGeliştirme-EÇ |  | 190d | 2017-11-03 A | 2018-07-25 |  | 38% | 118.72d | 2017-11-03 | 2018-07-25 | 190d | 58.6d |  | start no earlier than 2017-11-01 | EREN ÇAMDEVİREN [66.7%] | 200h | 75.03h | 200 | 200 | 75.03 | P6087-15 | P6087 | ÇALIŞILIYOR | P6087-14 |
| 66 | 1.6.1.2 | İşe Alım RaporGeliştirme-BY |  | 190d | 2017-11-03 A | 2018-07-25 |  | 94% | 10.82d | 2017-11-03 | 2018-07-25 | 190d | 58.6d |  | start no earlier than 2017-11-01 | ALİ BURAK YİRMİBEŞOĞLU [23.7%] | 360h | 339.5h | 360 | 360 | 339.5 | P6087-31 | P6087 | ÇALIŞILIYOR | P6087-14 |
| 67 | 1.6.2 | (MS) İşe Alım Teslimat Kapanışı | milestone | 0d | 2018-07-31 | 2018-07-31 | 64FS+4d |  |  | 2018-07-31 | 2018-07-31 | 0d | 58.6d |  | start no earlier than 2018-01-31 |  |  |  |  |  |  | P6087-16 | P6087 | AÇIK | P6087-14 |
| 68 | 1.7 | **YanHaklar** |  | 63d | 2018-03-05 | 2018-05-31 |  |  |  | 2018-03-05 | 2018-05-31 | 63d | 102.6d |  |  |  | 336h |  | 336 | 336 |  | P6087-17 | P6087 | PLANLANIYOR |  |
| 69 | 1.7.1 | **Analiz** |  | 15d | 2018-03-05 | 2018-03-23 |  |  |  | 2018-03-05 | 2018-03-23 | 15d | 115.6d | 0d |  |  | 80h |  | 80 | 80 |  | SKIP | P6087 |  | P6087-17 |
| 70 | 1.7.1.1 | YanHaklar Analiz-SA |  | 15d | 2018-03-05 | 2018-03-23 |  |  |  | 2018-03-05 | 2018-03-23 | 15d | 99d |  | start no earlier than 2018-03-05 | ŞÜKRAN ATALAY [66.7%] | 40h |  | 40 | 40 |  | P6087-22 | P6087 | AÇIK | P6087-17 |
| 71 | 1.7.1.2 | YanHaklar Analiz-MS |  | 15d | 2018-03-05 | 2018-03-23 |  |  |  | 2018-03-05 | 2018-03-23 | 15d | 99d |  | start no earlier than 2018-03-05 | Murat Şenaltun [66.7%] | 40h |  | 40 | 40 |  | P6087-23 | P6087 | AÇIK | P6087-17 |
| 72 | 1.7.2 | **Yazılım Geliştirme** |  | 20d | 2018-03-26 | 2018-04-20 | 69 |  |  | 2018-03-26 | 2018-04-20 | 20d | 115.6d | 0d |  |  | 160h |  | 160 | 160 |  | SKIP | P6087 | PLANLANIYOR | P6087-17 |
| 73 | 1.7.2.1 | YanHaklar Yazılım-SA |  | 20d | 2018-03-26 | 2018-04-20 |  |  |  | 2018-03-26 | 2018-04-20 | 20d | 99d |  | start no earlier than 2017-11-01 | SELİM AÇAR [40%] | 64h |  | 64 | 64 |  | P6087-37 | P6087 | AÇIK | P6087-17 |
| 74 | 1.7.2.2 | YanHaklar Yazılım-SMA |  | 18d | 2018-03-26 | 2018-04-18 |  |  |  | 2018-03-26 | 2018-04-18 | 18d | 101d |  | start no earlier than 2017-11-01 | SERAP MUTLU AKGÜL [66.7%] | 96h |  | 96 | 96 |  | P6087-32 | P6087 | AÇIK | P6087-17 |

| ID | WBS | Task | Type | Duration | Start | Finish | Predecessors | Baseline start | Baseline finish | Baseline duration | Total slack | Free slack | Constraint | Resources | Work | Cost | Baseline cost | Issue Key | Project Key | Issue Status | Teslimat |
| --- | --- | --- | --- | --- | --- | --- | --- | --- | --- | --- | --- | --- | --- | --- | --- | --- | --- | --- | --- | --- | --- |
| 75 | 1.7.3 | **Test Çalışmaları** |  | 30d | 2018-04-02 | 2018-05-11 | 72FS-15d | 2018-04-02 | 2018-05-11 | 30d | 115.6d |  |  |  | 96h | 96 | 96 | SKIP | P6087 | PLANLANIYOR | P6087-17 |
| 76 | 1.7.3.1 | YanHaklar Teste Hazırlık-Raporlama |  | 5d | 2018-04-02 | 2018-04-06 |  | 2018-04-02 | 2018-04-06 | 5d | 124d |  | start no earlier than 2017-11-01 | Berfu Utkan | 16h | 16 | 16 | P6087-33 | P6087 | AÇIK | P6087-17 |
| 77 | 1.7.3.2 | YanHaklar Testlerin Gerçekleştirilmesi |  | 15d | 2018-04-23 | 2018-05-11 | 72 | 2018-04-23 | 2018-05-11 | 15d | 99d | 0d | start no earlier than 2017-11-01 | TBD [50%] | 60h | 60 | 60 | SKIP | P6087 | PLANLANIYOR | P6087-17 |
| 78 | 1.7.3.3 | YanHaklar UAT Destek-SA |  | 15d | 2018-04-23 | 2018-05-11 | 77SS | 2018-04-23 | 2018-05-11 | 15d | 99d | 13d | start no earlier than 2017-11-01 | SELİM AÇAR [40%] | 20h | 20 | 20 | P6087-38 | P6087 | AÇIK | P6087-17 |
| 79 | 1.7.4 | (MS) YanHaklar Teslimat Kapanışı | milestone | 0d | 2018-05-31 | 2018-05-31 | 78 | 2018-05-31 | 2018-05-31 | 0d | 86d |  | start no earlier than 2018-05-31 |  |  |  |  | P6087-34 | P6087 | AÇIK | P6087-17 |
| 80 | 1.8 | (MS) Proje Kapanış | milestone | 0d | 2018-07-31 | 2018-07-31 | 63 | 2018-07-31 | 2018-07-31 | 0d | 58.6d |  | start no earlier than 2018-04-30 |  |  |  |  | P6087-21 | P6087 | AÇIK |  |
