# Softtech PİP Şablonu

Schedule from MS Project, 2015-04-17 to 2017-11-30, costs in TL, A marks actual dates.

## Calendars

- Standard: Mon-Fri 08:00-12:00, 13:00-17:00; Sat-Sun off.

## Resources

| Resource | Rate |
| --- | --- |
| Oktay Ardeniz | 1 |
| Serhat Değirmenci | 1 |
| Medine Yılmaz | 1 |
| Murat Bayram | 1 |
| Tülay Akarsu | 1 |
| Mehmet Emin Kahyatepe | 1 |
| Fazlı Ayan | 1 |
| Gülten Topal | 1 |
| Bilgen Ersoy | 1 |
| Engin Aydoğdu | 1 |
| İLHAN ÖZER | 1 |
| Ali Savran | 1 |
| OYA SÜER | 1 |
| OSMAN DEMİRTAŞ | 1 |
| ORÇUN ŞAKAR | 1 |
| MUSTAFA ÜMİT AKÇAY |  |

## Schedule

| ID | WBS | Task | Type | Duration | Start | Finish | Complete | Remaining | Total slack | Constraint | Resources | Work | Actual work | Cost | Issue Key | Project Key | Issue Priority | Issue Status | Teslimat |
| --- | --- | --- | --- | --- | --- | --- | --- | --- | --- | --- | --- | --- | --- | --- | --- | --- | --- | --- | --- |
| 1 | 1 | **Kondor+ Programı Çalışma Sürekliliği ve Versiyon Yükseltme** |  | 684d? | 2015-04-17 A | 2017-11-30 | 49% | 347.62d? | 0d |  |  | 6800h | 4538h | 1,780.96 | P6007-1 | P6007 | Major | Proje Oluşturuldu |  |
| 2 | 1.1 | RPM Geçmiş Kayıtlar |  | 273.61d? | 2015-04-17 A | 2017-10-31 A | 100% |  |  | finish no earlier than 2017-10-31 |  | 4538h | 4538h |  | SKIP | P6007 |  |  |  |
| 3 | 1.2 | **Yönetim** |  | 36.75d? | 2017-10-02 | 2017-11-21 |  |  | 6.25d |  |  | 340.96h |  | 340.96 | SKIP | P6007 |  |  |  |
| 4 | 1.2.1 | Proje Yönetim Faaliyetleri |  | 36.75d? | 2017-10-02 | 2017-11-21 |  |  | 6.25d | start no earlier than 2017-10-02 | Serhat Değirmenci | 294h |  | 294 | P6007-7 | P6007 |  | AÇIK | Yönetim |
| 5 | 1.2.2 | Kapsam Belirleme |  | 5.87d? | 2017-11-01 | 2017-11-08 |  |  | 15.13d | start no earlier than 2017-11-01 | Serhat Değirmenci | 46.96h |  | 46.96 | P6007-8 | P6007 |  | AÇIK | Kapsam |
| 6 | 1.3 | **Kondor+ Programı Çalışma Sürekliliği ve Versiyon Yükseltme** |  | 127d? | 2017-06-06 | 2017-11-30 |  |  | 0d |  |  | 1921.04h |  | 1,440 | P6007-2 | P6007 |  | PLANLANIYOR |  |
| 7 | 1.3.1 | **Analiz** |  | 60.13d? | 2017-08-28 | 2017-11-20 |  |  | 7.87d |  |  | 481.04h |  |  | SKIP | P6007 |  |  |  |
| 8 | 1.3.1.1 | Analiz |  | 60.13d? | 2017-08-28 | 2017-11-20 |  |  | 7.87d | start no earlier than 2017-08-28 | MUSTAFA ÜMİT AKÇAY | 481.04h |  |  | P6007-3 | P6007 |  | AÇIK | P6007-2 |
| 9 | 1.3.2 | **Geliştirme** |  | 120d | 2017-06-06 | 2017-11-20 |  |  | 7d |  |  | 960h |  | 960 | SKIP | P6007 |  |  |  |
| 10 | 1.3.2.1 | Geliştirme |  | 120d | 2017-06-06 | 2017-11-20 |  |  | 7d | start no earlier than 2017-06-06 | Serhat Değirmenci | 960h |  | 960 | P6007-4 | P6007 |  | AÇIK | P6007-2 |
| 11 | 1.3.3 | **Test** |  | 60d | 2017-09-04 | 2017-11-24 |  |  | 3d |  |  | 480h |  | 480 | SKIP | P6007 |  |  |  |
| 12 | 1.3.3.1 | Test |  | 60d | 2017-09-04 | 2017-11-24 |  |  | 3d | start no earlier than 2017-09-04 | Serhat Değirmenci | 480h |  | 480 | P6007-5 | P6007 |  | AÇIK | P6007-2 |
| 13 | 1.3.4 | **Geçiş** |  | 0d? | 2017-11-30 | 2017-11-30 |  |  | 0d |  |  |  |  |  | SKIP | P6007 |  |  |  |
| 14 | 1.3.4.1 | İzleme ve Yaygınlaşma | milestone | 0d? | 2017-11-30 | 2017-11-30 |  |  | 0d | start no earlier than 2017-11-30 | Serhat Değirmenci |  |  |  | P6007-6 | P6007 |  | AÇIK | P6007-2 |
