# Softtech PİP Şablonu

Schedule from MS Project, 2016-08-01 to 2018-06-29, costs in TL, A marks actual dates.

## Calendars

- Standard: Mon-Fri 08:00-12:00, 13:00-17:00; Sat-Sun off.

## Resources

| Resource | Rate |
| --- | --- |
| Oktay Ardeniz | 1 |
| Serhat Değirmenci | 1 |
| Medine Yılmaz | 1 |
| Murat Bayram | 1 |
| Tülay Akarsu | 1 |
| Mehmet Emin Kahyatepe | 1 |
| Fazlı Ayan | 1 |
| Gülten Topal | 1 |
| Bilgen Ersoy | 1 |
| Engin Aydoğdu | 1 |
| İLHAN ÖZER | 1 |
| Ali Savran | 1 |
| OYA SÜER | 1 |
| OSMAN DEMİRTAŞ | 1 |
| ORÇUN ŞAKAR | 1 |
| İrfan Bağcı |  |
| Sefa Özen |  |
| Aslı Başer - Softtech |  |
| Mehtap Özdemir |  |
| EMİNE BAHÇE |  |

## Schedule

| ID | WBS | Task | Type | Duration | Start | Finish | Complete | Remaining | Total slack | Constraint | Resources | Work | Actual work | Cost | Actual cost | Issue Key | Project Key | Issue Priority | Issue Status | Teslimat |
| --- | --- | --- | --- | --- | --- | --- | --- | --- | --- | --- | --- | --- | --- | --- | --- | --- | --- | --- | --- | --- |
| 1 | 1 | **Akreditifli ithalat/ihracat** |  | 499d? | 2016-08-01 A | 2018-06-29 | 35% | 326.36d? | 0d |  |  | 21680h | 12497.6h | 10,016 | 2,244.56 | P6010-1 | P6010 | Major | Proje Oluşturuldu |  |
| 2 | 1.1 | RPM Geçmiş Kayıtlar |  | 300d | 2016-08-01 A | 2017-09-22 A | 100% |  |  | start no earlier than 2016-08-01 |  | 10040h | 10040h |  |  | SKIP | P6010 |  |  |  |
| 3 | 1.2 | **Yönetim** |  | 125d? | 2017-11-03 A | 2018-04-26 | 13% | 109d? | 45d |  |  | 1000h | 128h | 1,000 | 128 | SKIP | P6010 |  |  |  |
| 4 | 1.2.1 | Proje Yönetim Faaliyetleri |  | 125d? | 2017-11-03 A | 2018-04-26 | 13% | 109d? | 45d | start no earlier than 2017-11-01 | Serhat Değirmenci | 1000h | 128h | 1,000 | 128 | P6010-3 | P6010 |  | ÇALIŞILIYOR | Yönetim |
| 5 | 1.3 | **Akreditifli İthalat** |  | 189d? | 2017-10-09 A | 2018-06-29 | 22% | 147.62d? | 0d |  |  | 10640h | 2329.56h | 9,016 | 2,116.56 | P6010-2 | P6010 |  | PLANLANIYOR |  |
| 6 | 1.3.1 | **Milestones** |  | 162d? | 2017-10-09 | 2018-05-23 |  |  | 27d |  |  |  |  |  |  | SKIP | P6010 |  |  |  |
| 7 | 1.3.1.1 | İGG | milestone | 0d | 2017-10-09 | 2017-10-09 |  |  | 189d | start no earlier than 2017-10-09 | Serhat Değirmenci |  |  |  |  | SKIP | P6010 |  |  |  |
| 8 | 1.3.1.2 | TGG | milestone | 0d? | 2017-10-23 | 2017-10-23 |  |  | 179d | start no earlier than 2017-10-23 | Serhat Değirmenci |  |  |  |  | SKIP | P6010 |  |  |  |
| 9 | 1.3.1.3 | THOGG | milestone | 0d? | 2017-12-25 | 2017-12-25 |  |  | 134d | start no earlier than 2017-12-25 | Serhat Değirmenci |  |  |  |  | SKIP | P6010 |  |  |  |
| 10 | 1.3.1.4 | ÜHOGG-Pilot | milestone | 0d? | 2018-02-21 | 2018-02-21 |  |  | 92d | start no earlier than 2018-02-21 | Serhat Değirmenci |  |  |  |  | SKIP | P6010 |  |  |  |
| 11 | 1.3.1.5 | ÜHOGG-Yaygınlaşma | milestone | 0d? | 2018-05-23 | 2018-05-23 |  |  | 27d | start no earlier than 2018-05-23 | Serhat Değirmenci |  |  |  |  | SKIP | P6010 |  |  |  |
| 12 | 1.3.2 | **Analiz** |  | 101.5d? | 2017-11-01 A | 2018-03-22 | 16% | 85.43d? | 70.5d |  |  | 2432h | 385h | 996 | 244 | SKIP | P6010 |  |  |  |
| 13 | 1.3.2.1 | Analiz |  | 94.5d? | 2017-11-10 A | 2018-03-22 | 32% | 64d? | 70.5d | start no earlier than 2017-11-01 | ORÇUN ŞAKAR | 756h | 244h | 756 | 244 | P6010-4 | P6010 |  | ÇALIŞILIYOR | P6010-2 |
| 14 | 1.3.2.2 | Analiz |  | 75d? | 2017-11-06 A | 2018-02-16 | 14% | 64.5d? | 94d | start no earlier than 2017-11-01 | İrfan Bağcı | 600h | 84h |  |  | P6010-5 | P6010 |  | ÇALIŞILIYOR | P6010-2 |
| 15 | 1.3.2.3 | Analiz |  | 10d? | 2017-12-26 A | 2018-01-08 | 11% | 8.88d? | 123d | start no earlier than 2017-12-01 | Mehtap Özdemir | 80h | 9h |  |  | P6010-25 | P6010 |  | ÇALIŞILIYOR | P6010-2 |
| 16 | 1.3.2.4 | Analiz-Komisyon |  | 94.5d? | 2017-11-07 A | 2018-03-19 | 6% | 88.5d? | 73.5d | start no earlier than 2017-11-01 | Aslı Başer - Softtech | 756h | 48h |  |  | P6010-6 | P6010 |  | ÇALIŞILIYOR | P6010-2 |
| 17 | 1.3.2.5 | Analiz-Internet |  | 30d? | 2017-11-01 | 2017-12-12 |  |  | 142d | start no earlier than 2017-11-01 | Serhat Değirmenci | 240h |  | 240 |  | P6010-7 | P6010 |  | AÇIK | P6010-2 |
| 18 | 1.3.3 | **Geliştirme** |  | 131d? | 2017-11-01 A | 2018-05-02 | 26% | 96.74d? | 41d |  |  | 7436h | 1944.56h | 7,248 | 1,872.56 | SKIP | P6010 |  |  |  |
| 19 | 1.3.3.1 | Geliştirme |  | 114d | 2017-11-24 A | 2018-05-02 | 38% | 71d | 41d | start no earlier than 2017-11-01 | Ali Savran | 912h | 344h | 912 | 344 | P6010-8 | P6010 |  | ÇALIŞILIYOR | P6010-2 |
| 20 | 1.3.3.2 | Geliştirme |  | 114d | 2017-11-15 A | 2018-04-23 | 41% | 67.25d | 48d | start no earlier than 2017-11-01 | Tülay Akarsu | 912h | 374h | 912 | 374 | P6010-9 | P6010 |  | ÇALIŞILIYOR | P6010-2 |
| 21 | 1.3.3.3 | Geliştirme |  | 114d | 2017-11-09 A | 2018-04-17 | 41% | 67.25d | 52d | start no earlier than 2017-11-01 | Mehmet Emin Kahyatepe | 912h | 374h | 912 | 374 | P6010-10 | P6010 |  | ÇALIŞILIYOR | P6010-2 |
| 22 | 1.3.3.4 | Geliştirme |  | 114d | 2017-11-24 A | 2018-05-02 | 20% | 91d | 41d | start no earlier than 2017-11-01 | Oktay Ardeniz | 912h | 184h | 912 | 184 | P6010-11 | P6010 |  | ÇALIŞILIYOR | P6010-2 |
| 23 | 1.3.3.5 | Geliştirme |  | 114d | 2017-11-01 | 2018-04-09 |  |  | 58d | start no earlier than 2017-11-01 | Serhat Değirmenci | 912h |  | 912 |  | P6010-12 | P6010 |  | AÇIK | P6010-2 |
| 24 | 1.3.3.6 | Geliştirme-Mirsis |  | 38d? | 2017-11-27 A | 2018-01-17 | 84% | 6d? | 116d | start no earlier than 2017-11-01 | OSMAN DEMİRTAŞ | 304h | 256h | 304 | 256 | P6010-13 | P6010 |  | ÇALIŞILIYOR | P6010-2 |
| 25 | 1.3.3.7 | Geliştirme-Vizyon |  | 43d? | 2017-11-15 A | 2018-01-12 | 99% | 0.43d? | 119d | start no earlier than 2017-11-01 | OYA SÜER | 344h | 340.56h | 344 | 340.56 | P6010-14 | P6010 |  | ÇALIŞILIYOR | P6010-2 |
| 26 | 1.3.3.8 | Geliştirme-Komisyon |  | 25d? | 2017-11-01 | 2017-12-05 |  |  | 147d | start no earlier than 2017-11-01 | Serhat Değirmenci | 200h |  | 200 |  | P6010-15 | P6010 |  | AÇIK | P6010-2 |
| 27 | 1.3.3.9 | Geliştirme-Fiyatlama |  | 80d? | 2017-11-01 | 2018-02-20 |  |  | 92d | start no earlier than 2017-11-01 | Serhat Değirmenci | 640h |  | 640 |  | P6010-16 | P6010 |  | AÇIK | P6010-2 |
| 28 | 1.3.3.10 | Geliştirme-Pega |  | 23.5d | 2017-12-28 A | 2018-01-30 | 38% | 14.5d | 107.5d | start no earlier than 2017-12-01 | EMİNE BAHÇE | 188h | 72h |  |  | P6010-17 | P6010 |  | ÇALIŞILIYOR | P6010-2 |
| 29 | 1.3.3.11 | Geliştirme-Ürün |  | 40d | 2017-11-01 | 2017-12-26 |  |  | 132d | start no earlier than 2017-11-01 | Serhat Değirmenci | 320h |  | 320 |  | P6010-18 | P6010 |  | AÇIK | P6010-2 |
| 30 | 1.3.3.12 | Geliştirme-Portföy |  | 40d | 2017-11-01 | 2017-12-26 |  |  | 132d | start no earlier than 2017-11-01 | Serhat Değirmenci | 320h |  | 320 |  | P6010-19 | P6010 |  | AÇIK | P6010-2 |
| 31 | 1.3.3.13 | Geliştirme-SK |  | 10d | 2017-11-01 | 2017-11-14 |  |  | 162d | start no earlier than 2017-11-01 | Serhat Değirmenci | 80h |  | 80 |  | P6010-20 | P6010 |  | AÇIK | P6010-2 |
| 32 | 1.3.3.14 | Geliştirme-İZ |  | 60d | 2017-11-01 | 2018-01-23 |  |  | 112d | start no earlier than 2017-11-01 | Serhat Değirmenci | 480h |  | 480 |  | P6010-21 | P6010 |  | AÇIK | P6010-2 |

| ID | WBS | Task | Type | Duration | Start | Finish | Total slack | Constraint | Resources | Work | Cost | Issue Key | Project Key | Issue Status | Teslimat |
| --- | --- | --- | --- | --- | --- | --- | --- | --- | --- | --- | --- | --- | --- | --- | --- |
| 33 | 1.3.4 | **Test** |  | 96.5d? | 2017-11-01 | 2018-03-15 | 75.5d |  |  | 772h | 772 | SKIP | P6010 |  |  |
| 34 | 1.3.4.1 | Test |  | 96.5d? | 2017-11-01 | 2018-03-15 | 75.5d | start no earlier than 2017-11-01 | Bilgen Ersoy | 772h | 772 | P6010-22 | P6010 | AÇIK | P6010-2 |
| 35 | 1.3.5 | **Geçiş** |  | 0d? | 2018-06-29 | 2018-06-29 | 0d |  |  |  |  | SKIP | P6010 |  |  |
| 36 | 1.3.5.1 | İzleme ve Yaygınlaşma | milestone | 0d? | 2018-06-29 | 2018-06-29 | 0d | start no earlier than 2018-06-29 | Serhat Değirmenci |  |  | P6010-23 | P6010 | AÇIK | P6010-2 |
