# Softtech PİP Şablonu

Schedule from MS Project, 2017-05-08 to 2018-08-10, costs in TL, A marks actual dates.

## Calendars

- Standard: Mon-Fri 08:00-12:00, 13:00-17:00; Sat-Sun off. Exceptions (off unless hours are given): 2017-12-31 08:00-12:00, 13:00-17:00.

## Resources

| Resource | Rate |
| --- | --- |
| EREN ÖZDEMİR | 1 |
| MUKADDER DEVEDEN | 1 |
| RUKEN KARAHAN | 1 |
| Mehtap Özdemir | 1 |
| Murat Şenaltun | 1 |
| ŞÜKRAN ATALAY | 1 |
| ARZU AKIN | 1 |
| TURGUT BİRDOĞAN | 1 |
| Bilgen Ersoy | 1 |
| Gürol Erer | 1 |
| Mustafa Kaan Özen | 1 |
| TBD | 1 |
| Berfu Utkan | 1 |
| TBD2 | 1 |
| Serhat Değirmenci |  |

## Schedule

| ID | WBS | Task | Duration | Start | Finish | Complete | Remaining | Total slack | Constraint | Resources | Work | Actual work | Cost | Actual cost | Issue Key | Project Key | Issue Priority | Issue Status | Teslimat |
| --- | --- | --- | --- | --- | --- | --- | --- | --- | --- | --- | --- | --- | --- | --- | --- | --- | --- | --- | --- |
| 1 | 1 | **Kadro Uygulamaları** | 331d? | 2017-05-08 A | 2018-08-10 | 65% | 114.34d? | 0d |  |  | 5040.54h | 2219h | 3,020.62 | 555 | P6086-1 | P6086 | Major | Proje Oluşturuldu |  |
| 2 | 1.1 | **RPM Geçmiş Kayıtları** | 127d | 2017-05-08 A | 2017-10-31 A | 100% |  |  |  |  | 1584h | 1584h |  |  | SKIP | P6086 |  |  |  |
| 3 | 1.1.1 | Proje Yönetim Faaliyetleri | 127d | 2017-05-08 A | 2017-10-31 A | 100% |  |  | finish no earlier than 2017-10-31 |  | 120h | 120h |  |  | SKIP | P6086 |  |  |  |
| 4 | 1.1.2 | Geliştirme Eski Kayıt-EO | 127d | 2017-05-08 A | 2017-10-31 A | 100% |  |  | finish no earlier than 2017-10-31 |  | 280h | 280h |  |  | SKIP | P6086 |  |  |  |
| 5 | 1.1.3 | Geliştirme Eski Kayıt-MD | 127d | 2017-05-08 A | 2017-10-31 A | 100% |  |  | finish no earlier than 2017-10-31 |  | 320h | 320h |  |  | SKIP | P6086 |  |  |  |
| 6 | 1.1.4 | Geliştirme Eski Kayıt-RK | 127d | 2017-05-08 A | 2017-10-31 A | 100% |  |  | finish no earlier than 2017-10-31 |  | 24h | 24h |  |  | SKIP | P6086 |  |  |  |
| 7 | 1.1.5 | Analiz Eski Kayıt-MO | 127d | 2017-05-08 A | 2017-10-31 A | 100% |  |  | finish no earlier than 2017-10-31 |  | 32h | 32h |  |  | SKIP | P6086 |  |  |  |
| 8 | 1.1.6 | Analiz Eski Kayıt-MS | 127d | 2017-05-08 A | 2017-10-31 A | 100% |  |  | finish no earlier than 2017-10-31 |  | 352h | 352h |  |  | SKIP | P6086 |  |  |  |
| 9 | 1.1.7 | Analiz Eski Kayıt-SA | 127d | 2017-05-08 A | 2017-10-31 A | 100% |  |  | finish no earlier than 2017-10-31 |  | 400h | 400h |  |  | SKIP | P6086 |  |  |  |
| 10 | 1.1.8 | Yonetim Eski Kayıt | 127d | 2017-05-08 A | 2017-10-31 A | 100% |  |  | finish no earlier than 2017-10-31 |  | 56h | 56h |  |  | SKIP | P6086 |  |  |  |
| 11 | 1.2 | **Yönetim** | 202d? | 2017-11-03 A | 2018-08-10 | 54% | 91.98d? | 0d |  |  | 799.98h | 337.5h | 490.7 | 257.5 | SKIP | P6086 |  |  |  |
| 12 | 1.2.1 | Proje Yönetim Faaliyetleri-GE | 66d | 2017-11-03 A | 2018-02-01 | 33% | 44.17d | 136d | start no earlier than 2017-11-01 | Gürol Erer [46.2%] | 210.7h | 63.5h | 210.7 | 63.5 | P6086-2 | P6086 |  | KAPALI | Yönetim |
| 13 | 1.2.2 | Proje Yönetim Faaliyetleri-KO | 130d | 2018-02-12 A | 2018-08-10 |  | 130d | 0d | start no earlier than 2017-11-01 | Mustafa Kaan Özen [11.5%] | 40h |  | 40 |  | P6086-3 | P6086 |  | ÇALIŞILIYOR | Yönetim |
| 14 | 1.2.3 | Yönetici Eforları-AA | 130d | 2017-11-03 A | 2018-05-02 | 81% | 24.92d | 72d | finish no earlier than 2018-04-30 | ARZU AKIN [11.5%] | 120h | 97h | 120 | 97 | P6086-20 | P6086 |  | ÇALIŞILIYOR | Yönetim |
| 15 | 1.2.4 | Yönetici Eforları-TB | 130d | 2017-11-09 A | 2018-05-08 | 80% | 26d | 68d | finish no earlier than 2018-04-30 | TURGUT BİRDOĞAN [7.7%] | 80h | 64h | 80 | 64 | P6086-21 | P6086 |  | ÇALIŞILIYOR | Yönetim |
| 16 | 1.2.5 | Yönetici Eforları-MO | 130d | 2017-11-15 A | 2018-05-14 | 76% | 30.69d | 64d | finish no earlier than 2018-04-30 | Mehtap Özdemir [7.7%] | 40h | 33h | 40 | 33 | P6086-4 | P6086 |  | ÇALIŞILIYOR | Yönetim |
| 17 | 1.2.6 | Proje Yönetim Faaliyetleri-SD | 38.66d? | 2018-02-01 A | 2018-03-27 | 26% | 28.66d? | 98.34d | start no earlier than 2018-02-01 | Serhat Değirmenci | 309.28h | 80h |  |  | P6086-26 | P6086 |  | ÇALIŞILIYOR | Yönetim |
| 18 | 1.3 | **Kadro Uygulaması 1. Faz** | 58.39d | 2017-11-01 A | 2018-01-19 | 53% | 27.4d | 145.61d |  |  | 396.58h | 156.5h | 396.58 | 156.5 | P6086-5 | P6086 |  | TAMAMLANDI |  |
| 19 | 1.3.1 | **Analiz** | 56.39d | 2017-11-03 A | 2018-01-19 | 60% | 22.67d | 145.61d |  |  | 47.54h | 47.5h | 47.54 | 47.5 | SKIP | P6086 |  |  |  |
| 20 | 1.3.1.1 | 1. Faz Analiz Destek-SA | 44d | 2017-11-03 A | 2018-01-02 | 22% | 34.33d | 158d | finish no earlier than 2017-12-29 | ŞÜKRAN ATALAY [23.3%] | 9.04h | 9h | 9.04 | 9 | P6086-6 | P6086 |  | KAPALI | P6086-5 |
| 21 | 1.3.1.2 | 1. Faz Analiz Destek-MS | 41.39d | 2017-11-24 A | 2018-01-19 A | 100% |  |  | finish no earlier than 2017-12-29 | Murat Şenaltun [11.6%] | 38.5h | 38.5h | 38.5 | 38.5 | P6086-7 | P6086 |  | KAPALI | P6086-5 |
| 22 | 1.3.2 | **Yazılım Geliştirme** | 45d | 2017-11-02 A | 2018-01-02 | 87% | 5.66d | 158d |  |  | 109.04h | 109h | 109.04 | 109 | SKIP | P6086 |  |  |  |
| 23 | 1.3.2.1 | Kadro 1. Faz UAT Destek EO | 45d | 2017-11-02 A | 2018-01-02 | 75% | 11.31d | 158d | start no earlier than 2017-11-01 | EREN ÖZDEMİR [28.6%] | 77.04h | 77h | 77.04 | 77 | P6086-17 | P6086 |  | KAPALI | P6086-5 |
| 24 | 1.3.2.2 | Kadro 1. Faz UAT Destek MD | 45d | 2017-11-02 A | 2018-01-02 A | 100% |  |  | start no earlier than 2017-11-01 | MUKADDER DEVEDEN [28.6%] | 32h | 32h | 32 | 32 | P6086-18 | P6086 |  | KAPALI | P6086-5 |

| ID | WBS | Task | Type | Duration | Start | Finish | Predecessors | Complete | Remaining | Total slack | Free slack | Constraint | Resources | Work | Actual work | Cost | Actual cost | Issue Key | Project Key | Issue Status | Teslimat |
| --- | --- | --- | --- | --- | --- | --- | --- | --- | --- | --- | --- | --- | --- | --- | --- | --- | --- | --- | --- | --- | --- |
| 25 | 1.3.3 | **Test Çalışmaları** |  | 35d | 2017-11-01 | 2017-12-19 |  |  |  | 169d |  |  |  | 240h |  | 240 |  | SKIP | P6086 |  |  |
| 26 | 1.3.3.1 | Teste Hazırlık-Raporlama |  | 35d | 2017-11-01 | 2017-12-19 |  |  |  | 169d |  | start no earlier than 2017-11-01 | Berfu Utkan [14.3%] | 40h |  | 40 |  | P6086-22 | P6086 | ÇÖZÜLDÜ | P6086-5 |
| 27 | 1.3.3.2 | Testlerin Gerçekleştirilmesi |  | 35d | 2017-11-01 | 2017-12-19 |  |  |  | 169d |  | start no earlier than 2017-11-01 | TBD [71.4%] | 200h |  | 200 |  | SKIP | P6086 | AÇIK |  |
| 28 | 1.3.4 | (MS) Teslimat Kapanışı |  | 1d | 2018-01-02 A | 2018-01-02 A |  | 100% |  |  |  | start no earlier than 2017-12-31 |  |  |  |  |  | P6086-8 | P6086 | KAPALI |  |
| 29 | 1.4 | **Kadro Simülasyon** |  | 242d | 2017-07-27 A | 2018-06-29 |  | 6% | 226.95d | 31d |  |  |  | 2259.97h | 141h | 2,133.33 | 141 | P6086-9 | P6086 | GERÇEKLEŞTİRİLİYOR |  |
| 30 | 1.4.1 | **Analiz** |  | 137d | 2017-07-27 A | 2018-02-01 |  | 12% | 120.69d | 66d | 0d |  |  | 579.97h | 141h | 453.33 | 141 | SKIP | P6086 |  |  |
| 31 | 1.4.1.1 | Kadro Simüklasyon Analiz-SA |  | 42d | 2017-11-07 A | 2018-01-02 |  | 27% | 30.56d | 88d |  | start no earlier than 2017-11-01 | ŞÜKRAN ATALAY [66.7%] | 224h | 61h | 224 | 61 | P6086-10 | P6086 | ÇÖZÜLDÜ | P6086-9 |
| 32 | 1.4.1.2 | Kadro Simüklasyon Analiz-MS |  | 43d | 2017-11-06 A | 2018-01-02 |  | 35% | 28d | 88d |  | start no earlier than 2017-11-01 | Murat Şenaltun [66.7%] | 229.33h | 80h | 229.33 | 80 | P6086-11 | P6086 | ÇÖZÜLDÜ | P6086-9 |
| 33 | 1.4.1.3 | Analiz Rezerve |  | 137d | 2017-07-27 | 2018-02-01 |  |  |  | 66d |  | finish no earlier than 2018-02-01 |  | 126.64h |  |  |  | SKIP | P6086 |  |  |
| 34 | 1.4.2 | **Yazılım Geliştirme** |  | 45d | 2018-02-02 | 2018-04-05 | 30 |  |  | 66d | 0d |  |  | 1472h |  | 1,472 |  | SKIP | P6086 |  |  |
| 35 | 1.4.2.1 | Kadro Simülasyon Yazılım-EO |  | 45d | 2018-02-02 | 2018-04-05 |  |  |  | 66d |  |  | EREN ÖZDEMİR [88.9%] | 480h |  | 480 |  | P6086-12 | P6086 | AÇIK | P6086-9 |
| 36 | 1.4.2.2 | Kadro Simülasyon Yazılım-RK |  | 45d | 2018-02-02 | 2018-04-05 |  |  |  | 66d |  | start no earlier than 2017-11-01 | RUKEN KARAHAN [40%] | 512h |  | 512 |  | P6086-13 | P6086 | AÇIK | P6086-9 |
| 37 | 1.4.2.3 | Kadro Simülasyon Yazılım-MD |  | 45d | 2018-02-02 | 2018-04-05 |  |  |  | 66d |  | start no earlier than 2017-11-01 | MUKADDER DEVEDEN [80%] | 480h |  | 480 |  | P6086-14 | P6086 | AÇIK | P6086-9 |
| 38 | 1.4.3 | **Test Çalışmaları** |  | 40d | 2018-03-16 | 2018-05-10 | 34FS-15d |  |  | 66d |  |  |  | 208h |  | 208 |  | SKIP | P6086 |  |  |
| 39 | 1.4.3.1 | Teste Hazırlık-Raporlama |  | 28d | 2018-03-16 | 2018-04-24 |  |  |  | 78d |  | start no earlier than 2017-11-01 | Berfu Utkan | 48h |  | 48 |  | P6086-19 | P6086 | AÇIK | P6086-9 |
| 40 | 1.4.3.2 | Testlerin Gerçekleştirilmesi |  | 40d | 2018-03-16 | 2018-05-10 |  |  |  | 66d |  | start no earlier than 2017-11-01 | TBD [50%] | 160h |  | 160 |  | SKIP | P6086 | AÇIK |  |
| 41 | 1.4.4 | (MS) Teslimat Kapanışı | milestone | 0d | 2018-03-30 | 2018-03-30 |  |  |  | 96d |  | start no earlier than 2018-03-30 |  |  |  |  |  | P6086-15 | P6086 | AÇIK |  |
| 42 | 1.4.5 | (MS) Proje Kapanış | milestone | 0d | 2018-06-29 | 2018-06-29 |  |  |  | 31d |  | start no earlier than 2018-06-29 |  |  |  |  |  | P6086-16 | P6086 | AÇIK |  |
