# Softtech PİP Şablonu

Schedule from MS Project, 2016-06-13 to 2018-10-04, costs in TL, A marks actual dates.

## Calendars

- Standard: Mon-Fri 08:00-12:00, 13:00-17:00; Sat-Sun off. Exceptions (off unless hours are given): 2017-12-31 08:00-12:00, 13:00-17:00.

## Resources

| Resource | Rate |
| --- | --- |
| MUKADDER DEVEDEN | 1 |
| RUKEN KARAHAN | 1 |
| Mehtap Özdemir | 1 |
| ŞÜKRAN ATALAY | 1 |
| ARZU AKIN | 1 |
| TURGUT BİRDOĞAN | 1 |
| Gürol Erer | 1 |
| Mustafa Kaan Özen | 1 |
| TBD | 1 |
| SERAP MUTLU AKGÜL | 1 |
| Murat Şenaltun | 1 |
| ALİ BURAK YİRMİBEŞOĞLU | 1 |
| Serhat Değirmenci |  |
| Tuğba Şahin |  |

## Schedule

| ID | WBS | Task | Type | Duration | Start | Finish | Predecessors | Complete | Remaining | Baseline start | Baseline finish | Baseline duration | Total slack | Free slack | Constraint | Resources | Work | Actual work | Cost | Baseline cost | Actual cost | Issue Key | Project Key | Issue Priority | Issue Status | Teslimat |
| --- | --- | --- | --- | --- | --- | --- | --- | --- | --- | --- | --- | --- | --- | --- | --- | --- | --- | --- | --- | --- | --- | --- | --- | --- | --- | --- |
| 1 | 1 | **Turnike Rapor Geliştirme** |  | 605d? | 2016-06-13 A | 2018-10-04 |  | 7% | 560.37d? | 2016-06-13 | 2018-08-31 | 581d | 0d |  |  |  | 5399.99h | 160.19h | 2,873.19 | 3,032 | 160.19 | P6090-1 | P6090 | Major | Proje Oluşturuldu |  |
| 2 | 1.1 | **RPM Geçmiş Kayıtları** |  | 362d | 2016-06-13 | 2017-10-31 |  |  |  | 2016-06-13 | 2017-10-31 | 362d | 243d |  |  |  | 2568h |  | 200 | 200 |  | SKIP | P6090 |  |  |  |
| 3 | 1.1.1 | Proje Yönetim Eski Kayıt |  | 362d | 2016-06-13 | 2017-10-31 |  |  |  | 2016-06-13 | 2017-10-31 | 362d | 243d |  | finish no earlier than 2017-10-31 |  | 376h |  |  |  |  | SKIP | P6090 |  |  |  |
| 4 | 1.1.2 | Analiz Eski Kayıt |  | 362d | 2016-06-13 | 2017-10-31 |  |  |  | 2016-06-13 | 2017-10-31 | 362d | 243d |  | finish no earlier than 2017-10-31 |  | 472h |  |  |  |  | SKIP | P6090 |  |  |  |
| 5 | 1.1.3 | Teknik Eski Kayıt |  | 362d | 2016-06-13 | 2017-10-31 |  |  |  | 2016-06-13 | 2017-10-31 | 362d | 243d |  | finish no earlier than 2017-10-31 |  | 1400h |  |  |  |  | SKIP | P6090 |  |  |  |
| 6 | 1.1.4 | KG Eski Kayıt |  | 362d | 2016-06-13 | 2017-10-31 |  |  |  | 2016-06-13 | 2017-10-31 | 362d | 243d |  | finish no earlier than 2017-10-31 |  | 120h |  |  |  |  | SKIP | P6090 |  |  |  |
| 7 | 1.1.5 | Testlerin Gerç Eski |  | 362d | 2016-06-13 | 2017-10-31 |  |  |  | 2016-06-13 | 2017-10-31 | 362d | 243d |  | finish no earlier than 2017-10-31 | TBD [65.6%] | 200h |  | 200 | 200 |  | SKIP | P6090 |  |  |  |
| 8 | 1.2 | **Yönetim** |  | 225d? | 2017-11-27 A | 2018-10-04 |  | 23% | 173.76d? | 2017-11-27 | 2018-08-31 | 201d | 0d |  |  |  | 383.99h | 68.19h | 225.19 | 584 | 68.19 | SKIP | P6090 |  |  |  |
| 9 | 1.2.1 | Proje Yönetim Faaliyetleri-GE |  | 199d | 2017-11-29 A | 2018-08-31 A |  | 100% |  | 2017-11-29 | 2018-08-31 | 199d |  |  | finish no earlier than 2018-08-31 | Gürol Erer [46.2%] | 41.19h | 41.19h | 41.19 | 240 | 41.19 | P6090-2 | P6090 |  | KAPALI | Yönetim |
| 10 | 1.2.2 | Proje Yönetim Faaliyetleri-KO |  | 201d | 2017-12-29 A | 2018-10-04 |  |  | 201d | 2017-11-27 | 2018-08-31 | 201d | 0d |  | start no earlier than 2017-11-27 | Mustafa Kaan Özen [4%] | 24h |  | 24 | 64 |  | P6090-3 | P6090 |  | ÇALIŞILIYOR | Yönetim |
| 11 | 1.2.3 | Yönetici Eforları-AA |  | 201d | 2017-12-11 A | 2018-09-14 |  | 17% | 167.08d | 2017-11-27 | 2018-08-31 | 201d | 14d |  | finish no earlier than 2018-08-31 | ARZU AKIN [11.5%] | 80h | 27h | 80 | 160 | 27 | P6090-4 | P6090 |  | ÇALIŞILIYOR | Yönetim |
| 12 | 1.2.4 | Yönetici Eforları-TB |  | 201d | 2017-11-27 | 2018-08-31 |  |  |  | 2017-11-27 | 2018-08-31 | 201d | 24d |  | finish no earlier than 2018-08-31 | TURGUT BİRDOĞAN [7.7%] | 40h |  | 40 | 80 |  | P6090-5 | P6090 |  | AÇIK | Yönetim |
| 13 | 1.2.5 | Yönetici Eforları-MO |  | 201d | 2017-11-27 | 2018-08-31 |  |  |  | 2017-11-27 | 2018-08-31 | 201d | 24d |  | finish no earlier than 2018-08-31 | Mehtap Özdemir [7.7%] | 40h |  | 40 | 40 |  | P6090-6 | P6090 |  | AÇIK | Yönetim |
| 14 | 1.2.6 | Proje Yönetim Faaliyetleri-SD |  | 19.85d? | 2018-02-01 | 2018-02-28 |  |  |  |  |  |  | 156.15d |  | start no earlier than 2018-02-01 | Serhat Değirmenci | 158.8h |  |  |  |  | P6090-28 | P6090 |  | AÇIK | Yönetim |
| 15 | 1.3 | Proje Canlandırma | milestone | 0d | 2017-11-27 | 2017-11-27 |  |  |  | 2017-11-27 | 2017-11-27 | 0d | 3d |  | start no earlier than 2017-11-27 |  |  |  |  |  |  | SKIP |  |  |  |  |
| 16 | 1.4 | **Önceliklendirilmiş Raporlar** |  | 54.25d | 2017-11-30 A | 2018-02-13 | 15 | 21% | 43d | 2017-11-30 | 2018-02-13 | 54.25d | 167.75d |  |  |  | 360h | 92h | 360 | 360 | 92 | P6090-7 | P6090 |  | PLANLANIYOR |  |
| 17 | 1.4.1 | **Yazılım Geliştirme** |  | 54.25d | 2017-11-30 A | 2018-02-13 |  | 21% | 43d | 2017-11-30 | 2018-02-13 | 54.25d | 167.75d |  |  |  | 360h | 92h | 360 | 360 | 92 | SKIP | P6090 |  |  | P6090-7 |
| 18 | 1.4.1.1 | 1.Faz Yazılım-RK |  | 19d | 2017-11-30 A | 2017-12-26 |  | 53% | 8.87d | 2017-11-30 | 2017-12-26 | 19d | 203d |  |  | RUKEN KARAHAN [78.9%] | 120h | 64h | 120 | 120 | 64 | P6090-11 | P6090 |  | ÇALIŞILIYOR | P6090-7 |
| 19 | 1.4.1.2 | 1.Faz Yazılım-MD |  | 19d | 2017-12-05 A | 2017-12-29 |  | 23% | 14.57d | 2017-12-05 | 2017-12-29 | 19d | 167.75d | 0d | start no earlier than 2017-11-01 | MUKADDER DEVEDEN [78.9%] | 120h | 28h | 120 | 120 | 28 | P6090-12 | P6090 |  | ÇALIŞILIYOR | P6090-7 |
| 20 | 1.4.1.3 | 1.Faz Yazlım BY |  | 32.25d | 2017-12-31 | 2018-02-13 | 19 |  |  | 2017-12-31 | 2018-02-13 | 32.25d | 167.75d |  | start no earlier than 2017-11-01 | ALİ BURAK YİRMİBEŞOĞLU [46.5%] | 120h |  | 120 | 120 |  | P6090-13 | P6090 |  | AÇIK | P6090-7 |
| 21 | 1.4.2 | (MS) Teslimat Kapanışı | milestone | 0d | 2017-12-29 | 2017-12-29 |  |  |  | 2017-12-29 | 2017-12-29 | 0d | 201d |  | start no earlier than 2017-12-29 |  |  |  |  |  |  | P6090-14 | P6090 |  | AÇIK | P6090-7 |
| 22 | 1.5 | **Kalan Raporlar ve Banka geneline açılacak uygulama** |  | 120d | 2018-01-15 | 2018-06-29 |  |  |  | 2018-01-15 | 2018-06-29 | 120d | 24d |  |  |  | 1680h |  | 1,680 | 1,480 |  | P6090-8 | P6090 |  | PLANLANIYOR |  |
| 23 | 1.5.1 | **Analiz** |  | 16d | 2018-01-15 | 2018-02-05 |  |  |  | 2018-01-15 | 2018-02-05 | 16d | 24d | 0d |  |  | 200h |  | 200 | 240 |  | SKIP | P6090 |  |  | P6090-8 |
| 24 | 1.5.1.1 | 2.Faz Analiz-SA |  | 16d | 2018-01-15 | 2018-02-05 |  |  |  | 2018-01-15 | 2018-02-05 | 16d | 24d |  | start no earlier than 2018-01-15 | ŞÜKRAN ATALAY [66.7%] | 64h |  | 64 | 80 |  | P6090-15 | P6090 |  | AÇIK | P6090-8 |
| 25 | 1.5.1.2 | 2.Faz Analiz-MS |  | 16d | 2018-01-15 | 2018-02-05 |  |  |  | 2018-01-15 | 2018-02-05 | 16d | 24d |  | start no earlier than 2018-01-15 | Murat Şenaltun [90.9%] | 136h |  | 136 | 160 |  | P6090-16 | P6090 |  | AÇIK | P6090-8 |

| ID | WBS | Task | Type | Duration | Start | Finish | Predecessors | Baseline start | Baseline finish | Baseline duration | Total slack | Free slack | Constraint | Resources | Work | Cost | Baseline cost | Issue Key | Project Key | Teslimat | Issue Status |
| --- | --- | --- | --- | --- | --- | --- | --- | --- | --- | --- | --- | --- | --- | --- | --- | --- | --- | --- | --- | --- | --- |
| 26 | 1.5.2 | **Yazılım Geliştirme** |  | 60d | 2018-02-06 | 2018-04-30 | 23 | 2018-02-06 | 2018-04-30 | 60d | 69d | 0d |  |  | 1120h | 1,120 | 856 | SKIP | P6090 | P6090-8 |  |
| 27 | 1.5.2.1 | 2.Faz Yazılım-MD |  | 60d | 2018-02-06 | 2018-04-30 |  | 2018-02-06 | 2018-04-30 | 60d | 69d |  |  | MUKADDER DEVEDEN [39.1%] | 240h | 240 | 160 | P6090-17 | P6090 | P6090-8 | AÇIK |
| 28 | 1.5.2.2 | 2.Faz Yazılım-SMA |  | 60d | 2018-02-06 | 2018-04-30 |  | 2018-02-06 | 2018-04-30 | 60d | 69d |  | start no earlier than 2017-11-01 | SERAP MUTLU AKGÜL [11.7%] | 176h | 176 | 96 | P6090-26 | P6090 | P6090-8 | AÇIK |
| 29 | 1.5.2.3 | 2.Faz Yazılım-RK |  | 60d | 2018-02-06 | 2018-04-30 |  | 2018-02-06 | 2018-04-30 | 60d | 69d |  | start no earlier than 2017-11-01 | RUKEN KARAHAN [40%] | 504h | 504 | 480 | P6090-18 | P6090 | P6090-8 | AÇIK |
| 30 | 1.5.2.4 | 2.Faz Yazılım-BY |  | 60d | 2018-02-06 | 2018-04-30 |  | 2018-02-06 | 2018-04-30 | 60d | 69d |  | start no earlier than 2017-11-01 | ALİ BURAK YİRMİBEŞOĞLU [20.8%] | 200h | 200 | 120 | P6090-19 | P6090 | P6090-8 | AÇIK |
| 31 | 1.5.3 | **Test Çalışmaları** |  | 45d | 2018-04-10 | 2018-06-11 | 26FS-15d | 2018-04-10 | 2018-06-11 | 45d | 69d | 0d |  |  | 360h | 360 | 384 | SKIP | P6090 | P6090-8 |  |
| 32 | 1.5.3.1 | Teste Hazırlık-Raporlama |  | 30d | 2018-04-10 | 2018-05-21 |  | 2018-04-10 | 2018-05-21 | 30d | 84d |  | start no earlier than 2017-11-01 | TBD | 240h | 240 | 240 | SKIP | P6090 | P6090-8 | AÇIK |
| 33 | 1.5.3.2 | Testlerin Gerçekleştirilmesi |  | 30d | 2018-05-01 | 2018-06-11 | 26 | 2018-05-01 | 2018-06-11 | 30d | 69d |  | start no earlier than 2017-11-01 | TBD [50%] | 120h | 120 | 120 | SKIP | P6090 | P6090-8 | AÇIK |
| 34 | 1.5.3.3 | 2.Faz Test Desteği-RK | milestone | 0d | 2018-04-30 | 2018-04-30 | 26 | 2018-05-01 | 2018-05-03 | 3d | 99d |  | start no earlier than 2018-02-12 | RUKEN KARAHAN |  |  | 24 | P6090-20 | P6090 | P6090-8 | AÇIK |
| 35 | 1.5.4 | (MS) Teslimat Kapanışı | milestone | 0d | 2018-06-29 | 2018-06-29 | 31FS+14d | 2018-06-29 | 2018-06-29 | 0d | 69d |  | start no earlier than 2018-03-30 |  |  |  |  | P6090-21 | P6090 | P6090-8 | AÇIK |
| 36 | 1.6 | **Atlas Veri Merkezi entegrasyon** |  | 86d | 2018-04-03 | 2018-07-31 |  | 2018-04-03 | 2018-07-31 | 86d | 24d |  |  |  | 408h | 408 | 408 | P6090-9 | P6090 |  | PLANLANIYOR |
| 37 | 1.6.1 | **Analiz** |  | 40d | 2018-04-03 | 2018-05-28 |  | 2018-04-03 | 2018-05-28 | 40d | 24d | 0d |  |  | 48h | 48 | 48 | SKIP | P6090 | P6090-9 |  |
| 38 | 1.6.1.1 | 3.Faz Analiz-SA |  | 40d | 2018-04-03 | 2018-05-28 | 23FS+40d | 2018-04-03 | 2018-05-28 | 40d | 24d |  | start no earlier than 2017-11-01 | ŞÜKRAN ATALAY [68.9%] | 48h | 48 | 48 | P6090-22 | P6090 | P6090-9 | AÇIK |
| 39 | 1.6.2 | **Yazılım Geliştirme** |  | 20d | 2018-05-29 | 2018-06-25 | 37 | 2018-05-29 | 2018-06-25 | 20d | 24d | 0d |  |  | 280h | 280 | 280 | SKIP | P6090 | P6090-9 |  |
| 40 | 1.6.2.1 | 3.Faz Yazılım-RK |  | 20d | 2018-05-29 | 2018-06-25 |  | 2018-05-29 | 2018-06-25 | 20d | 24d |  | start no earlier than 2017-11-01 | RUKEN KARAHAN [40%] | 160h | 160 | 160 | P6090-23 | P6090 | P6090-9 | AÇIK |
| 41 | 1.6.2.2 | 3.Faz Yazılım-BY |  | 20d | 2018-05-29 | 2018-06-25 |  | 2018-05-29 | 2018-06-25 | 20d | 24d |  | start no earlier than 2017-11-01 | ALİ BURAK YİRMİBEŞOĞLU [75%] | 120h | 120 | 120 | P6090-24 | P6090 | P6090-9 | AÇIK |
| 42 | 1.6.3 | **Test Çalışmaları** |  | 35d | 2018-06-05 | 2018-07-23 | 39FS-15d | 2018-06-05 | 2018-07-23 | 35d | 24d | 0d |  |  | 80h | 80 | 80 | SKIP | P6090 | P6090-9 |  |
| 43 | 1.6.3.1 | Teste Hazırlık-Raporlama |  | 20d | 2018-06-05 | 2018-07-02 |  | 2018-06-05 | 2018-07-02 | 20d | 39d |  | start no earlier than 2017-11-01 | TBD [25%] | 40h | 40 | 40 | SKIP | P6090 | P6090-9 | AÇIK |
| 44 | 1.6.3.2 | Testlerin Gerçekleştirilmesi |  | 20d | 2018-06-26 | 2018-07-23 | 39 | 2018-06-26 | 2018-07-23 | 20d | 24d |  | start no earlier than 2017-11-01 | TBD [25%] | 40h | 40 | 40 | SKIP | P6090 | P6090-9 | AÇIK |
| 45 | 1.6.4 | (MS) Teslimat Kapanışı | milestone | 0d | 2018-07-31 | 2018-07-31 | 42FS+6d | 2018-07-31 | 2018-07-31 | 0d | 24d | 0d | start no earlier than 2018-03-30 |  |  |  |  | P6090-25 | P6090 | P6090-9 | AÇIK |
| 46 | 1.7 | (MS) Proje Kapanış | milestone | 0d | 2018-08-31 | 2018-08-31 | 45FS+23d | 2018-08-31 | 2018-08-31 | 0d | 24d |  | start no earlier than 2018-04-30 |  |  |  |  | P6090-10 | P6090 |  | AÇIK |
